# Bioimpedancia: pruebas clínicas y portabilidad

How a schedule from GanttProject changed from version to version. A marks actual dates.

## Version 1 (saved 2020-07-28)

Note of the change: Subiendo todo de nuevo

| ID | WBS | Task | Duration | Start | Finish | Predecessors | Complete |
| --- | --- | --- | --- | --- | --- | --- | --- |
| 1 | 1 | **Gestión general del proyecto** | 114d | 2020-06-22 | 2020-12-03 |  | 14% |
| 2 |  | Fase de inicio del proyecto | 2d | 2020-06-22 | 2020-06-23 |  | 100% |
| 3 |  | Definición de alcance | 1d | 2020-06-24 | 2020-06-24 | 2 | 100% |
| 4 |  | Estudio de la normativa IRAM 4220-1 | 5d | 2020-09-07 | 2020-09-11 |  |  |
| 5 |  | Compras y adquisiciones | 5d | 2020-08-31 | 2020-09-04 |  |  |
| 6 |  | Elaboración del manual de uso | 4d | 2020-11-25 | 2020-11-30 | 42 |  |
| 7 |  | Rendición de compras y adquisiciones | 1d | 2020-12-01 | 2020-12-01 | 8SS |  |
| 8 |  | Escritura del informe final | 3d | 2020-12-01 | 2020-12-03 | 6 |  |
| 9 | 2 | **Sistema de autonomía energética** | 4d | 2020-09-14 | 2020-09-17 |  |  |
| 10 |  | Análisis y elección de bateria | 1d | 2020-09-14 | 2020-09-14 | 4 |  |
| 11 |  | Diseño de circuito de carga | 1d | 2020-09-15 | 2020-09-15 | 10 |  |
| 12 |  | Implementación del circuito de carga | 2d | 2020-09-16 | 2020-09-17 | 5, 11 |  |
| 13 |  | Diseño de circuito de regulación | 1d | 2020-09-15 | 2020-09-15 | 10 |  |
| 14 |  | Implementación del circuito de regulación | 2d | 2020-09-16 | 2020-09-17 | 5, 13 |  |
| 15 | 3 | **Sistema basado en AD5933** | 11d | 2020-09-18 | 2020-10-02 |  |  |
| 16 |  | Diseño del sistema | 5d | 2020-09-18 | 2020-09-24 | 4, 14 |  |
| 17 |  | Elaboración de la placa del circuito impreso | 4d | 2020-09-25 | 2020-09-30 | 5, 16 |  |
| 18 |  | Ensamble y soldado de la placa del sistema y electros aplicables | 2d | 2020-10-01 | 2020-10-02 | 17 |  |
| 19 | 4 | **Software de control y comunicación basado en Raspberry Pi 4** | 13d | 2020-10-05 | 2020-10-22 | 17 |  |
| 20 |  | Diagramación de la arquitectura | 4d | 2020-10-05 | 2020-10-08 | 5, 16, 18 |  |
| 21 |  | Desarrollo del firmware de comunicación con sistema AD5933 | 3d | 2020-10-09 | 2020-10-14 | 18, 20 |  |
| 22 |  | Desarrollo de firmware de control | 4d | 2020-10-09 | 2020-10-15 | 18, 20 |  |
| 23 |  | Desarrollo del firmware de comunicación inalámbrica con dispositivo móvil | 4d | 2020-10-15 | 2020-10-20 | 20, 21 |  |
| 24 |  | Pruebas de funcionamiento | 2d | 2020-10-21 | 2020-10-22 | 21, 22, 23 |  |
| 25 | 5 | **Software de interfaz con el usuario** | 22d | 2020-09-25 | 2020-10-27 |  |  |
| 26 |  | Diagramación de la interfaz (diseño y estructura) | 2d | 2020-09-25 | 2020-09-28 |  |  |
| 27 |  | Desarrollo del software | 4d | 2020-10-21 | 2020-10-26 | 23, 26 |  |
| 28 |  | Pruebas de funcionamiento | 1d | 2020-10-27 | 2020-10-27 | 27 |  |
| 29 | 6 | **Protocolo de medición y consentimiento informado (CI)** | 17d | 2020-09-07 | 2020-09-29 |  |  |
| 30 |  | Escritura del Protocolo de Medición | 1d | 2020-09-07 | 2020-09-07 | 31FF |  |
| 31 |  | Escritura del CI | 1d | 2020-09-07 | 2020-09-07 |  |  |
| 32 |  | Primer Envío del protocolo y el CI a comité de bioética externos (CBE) para su revisión | 7d | 2020-09-08 | 2020-09-16 | 30, 31 |  |
| 33 |  | Corrección del protocolo y CI a partir de la devolución del CBE | 2d | 2020-09-17 | 2020-09-18 | 32 |  |
| 34 |  | Segundo Envío del protocolo y el CI a CBE para su aprobación definitiva | 7d | 2020-09-21 | 2020-09-29 | 33 |  |
| 35 | 7 | **Ensayo integral de funcionamiento del dispositivo** | 19d | 2020-10-28 | 2020-11-24 |  |  |
| 36 |  | Implementación integral del dispositivo | 4d | 2020-10-28 | 2020-11-02 | 18, 24, 28 |  |
| 37 |  | Mediciones sobre circuitos de componentes pasivos R-C | 1d | 2020-11-03 | 2020-11-03 | 36 |  |
| 38 |  | Análisis de mediciones en circuito R-C | 1d | 2020-11-04 | 2020-11-04 | 37 |  |
| 39 |  | Mediciones sobre sistemas biológicos ex-vivo | 1d | 2020-11-05 | 2020-11-05 | 38 |  |
| 40 |  | Análisis de mediciones en sistemas biológicos ex-vivo | 1d | 2020-11-06 | 2020-11-06 | 39 |  |
| 41 |  | Mediciones sobre voluntarios humanos | 7d | 2020-11-09 | 2020-11-17 | 34, 40 |  |
| 42 |  | Análisis de mediciones sobre seres humanos | 4d | 2020-11-18 | 2020-11-24 | 41 |  |

## Version 2 (saved 2020-07-30)

Note of the change: Actualización de Actividades semana 2 a 3

Last finish stays 2020-12-03. Complete tasks 2 → 0.

Changed:

| ID | Task | Start | Finish | Duration | Complete | Predecessors | Other |
| --- | --- | --- | --- | --- | --- | --- | --- |
| 1 | **Gestión general del proyecto** |  |  |  | 14% → 0% |  |  |
| 2 | Fase de inicio del proyecto |  |  |  | 100% → 0% |  |  |
| 3 | Definición de alcance |  |  |  | 100% → 0% |  |  |
| 4 | Estudio de la normativa IRAM 4220-1 | 2020-09-07 → 2020-09-01 (-6d) | 2020-09-11 → 2020-09-07 (-4d) |  |  |  | resources Antonio DellOsa [50%]; Diego González Dondo [50%]; Agustín Mailing [30%] → Antonio DellOsa [40%]; Diego González Dondo [50%]; Agustín Mailing [30%] |
| 5 | Compras y adquisiciones | 2020-08-31 → 2020-09-07 (+7d) | 2020-09-04 → 2020-09-11 (+7d) |  |  |  | resources Antonio DellOsa → Antonio DellOsa [50%] |
| 6 | Elaboración del manual de uso | 2020-11-25 → 2020-11-30 (+5d) | 2020-11-30 → 2020-12-03 (+3d) |  |  | 42 → 7FF, 8FF, 42 |  |
| 7 | Rendición de compras y adquisiciones | 2020-12-01 → 2020-12-03 (+2d) | 2020-12-01 → 2020-12-03 (+2d) |  |  | 8SS → none |  |
| 8 | Escritura del informe final |  |  |  |  | 6 → none |  |
| 9 | **Sistema de autonomía energética** | 2020-09-14 → 2020-09-08 (-6d) | 2020-09-17 → 2020-09-15 (-2d) | 4d → 6d |  |  |  |
| 10 | Análisis y elección de bateria | 2020-09-14 → 2020-09-08 (-6d) | 2020-09-14 → 2020-09-08 (-6d) |  |  |  |  |
| 11 | Diseño de circuito de carga | 2020-09-15 → 2020-09-09 (-6d) | 2020-09-15 → 2020-09-09 (-6d) |  |  |  |  |
| 12 | Implementación del circuito de carga | 2020-09-16 → 2020-09-14 (-2d) | 2020-09-17 → 2020-09-15 (-2d) |  |  |  |  |
| 13 | Diseño de circuito de regulación | 2020-09-15 → 2020-09-09 (-6d) | 2020-09-15 → 2020-09-09 (-6d) |  |  |  |  |
| 14 | Implementación del circuito de regulación | 2020-09-16 → 2020-09-14 (-2d) | 2020-09-17 → 2020-09-15 (-2d) |  |  |  |  |
| 15 | **Sistema basado en AD5933** | 2020-09-18 → 2020-09-16 (-2d) | 2020-10-02 → 2020-09-30 (-2d) |  |  |  |  |
| 16 | Diseño del sistema | 2020-09-18 → 2020-09-16 (-2d) | 2020-09-24 → 2020-09-22 (-2d) |  |  |  |  |
| 17 | Elaboración de la placa del circuito impreso | 2020-09-25 → 2020-09-23 (-2d) | 2020-09-30 → 2020-09-28 (-2d) |  |  |  |  |
| 18 | Ensamble y soldado de la placa del sistema y electros aplicables | 2020-10-01 → 2020-09-29 (-2d) | 2020-10-02 → 2020-09-30 (-2d) |  |  |  |  |
| 19 | **Software de control y comunicación basado en Raspberry Pi 4** | 2020-10-05 → 2020-10-01 (-4d) | 2020-10-22 → 2020-10-20 (-2d) |  |  |  |  |
| 20 | Diagramación de la arquitectura | 2020-10-05 → 2020-10-01 (-4d) | 2020-10-08 → 2020-10-06 (-2d) |  |  |  |  |
| 21 | Desarrollo del firmware de comunicación con sistema AD5933 | 2020-10-09 → 2020-10-07 (-2d) | 2020-10-14 → 2020-10-09 (-5d) |  |  |  |  |
| 22 | Desarrollo de firmware de control | 2020-10-09 → 2020-10-07 (-2d) | 2020-10-15 → 2020-10-13 (-2d) |  |  |  |  |
| 23 | Desarrollo del firmware de comunicación inalámbrica con dispositivo móvil | 2020-10-15 → 2020-10-13 (-2d) | 2020-10-20 → 2020-10-16 (-4d) |  |  |  |  |
| 24 | Pruebas de funcionamiento | 2020-10-21 → 2020-10-19 (-2d) | 2020-10-22 → 2020-10-20 (-2d) |  |  |  |  |
| 25 | **Software de interfaz con el usuario** |  | 2020-10-27 → 2020-10-23 (-4d) | 22d → 20d |  |  |  |
| 27 | Desarrollo del software | 2020-10-21 → 2020-10-19 (-2d) | 2020-10-26 → 2020-10-22 (-4d) |  |  |  |  |
| 28 | Pruebas de funcionamiento | 2020-10-27 → 2020-10-23 (-4d) | 2020-10-27 → 2020-10-23 (-4d) |  |  |  |  |
| 35 | **Ensayo integral de funcionamiento del dispositivo** | 2020-10-28 → 2020-10-26 (-2d) | 2020-11-24 → 2020-11-19 (-5d) |  |  |  |  |
| 36 | Implementación integral del dispositivo | 2020-10-28 → 2020-10-26 (-2d) | 2020-11-02 → 2020-10-29 (-4d) |  |  |  |  |
| 37 | Mediciones sobre circuitos de componentes pasivos R-C | 2020-11-03 → 2020-10-30 (-4d) | 2020-11-03 → 2020-10-30 (-4d) |  |  |  |  |
| 38 | Análisis de mediciones en circuito R-C | 2020-11-04 → 2020-11-02 (-2d) | 2020-11-04 → 2020-11-02 (-2d) |  |  |  |  |
| 39 | Mediciones sobre sistemas biológicos ex-vivo | 2020-11-05 → 2020-11-03 (-2d) | 2020-11-05 → 2020-11-03 (-2d) |  |  |  |  |
| 40 | Análisis de mediciones en sistemas biológicos ex-vivo | 2020-11-06 → 2020-11-04 (-2d) | 2020-11-06 → 2020-11-04 (-2d) |  |  |  |  |
| 41 | Mediciones sobre voluntarios humanos | 2020-11-09 → 2020-11-05 (-4d) | 2020-11-17 → 2020-11-13 (-4d) |  |  |  |  |
| 42 | Análisis de mediciones sobre seres humanos | 2020-11-18 → 2020-11-16 (-2d) | 2020-11-24 → 2020-11-19 (-5d) |  |  |  |  |
